# GANTT

Schedule from MS Project, 2021-04-26 to 2021-06-03, A marks actual dates.

## Calendars

- Estándar: Mon-Fri 09:00-13:00, 15:00-19:00; Sat-Sun off.

## Resources

| Resource |
| --- |
| Programador 1 |
| Programador 2 |

## Schedule

| ID | WBS | Task | Type | Duration | Start | Finish | Predecessors | Complete |
| --- | --- | --- | --- | --- | --- | --- | --- | --- |
| 1 | 1 | **Diplomas y Certificados v1** |  | 29d | 2021-04-26 A | 2021-06-03 A |  | 100% |
| 2 | 1.1 | **Panel de Usuario** |  | 8d | 2021-04-26 A | 2021-05-05 A |  | 100% |
| 3 | 1.1.1 | Acceso de Usuario |  | 1d | 2021-04-26 A | 2021-04-26 A |  | 100% |
| 4 | 1.1.2 | Home |  | 1d | 2021-04-27 A | 2021-04-27 A | 3 | 100% |
| 5 | 1.1.3 | Mis cursos |  | 2d | 2021-04-28 A | 2021-04-29 A | 4 | 100% |
| 6 | 1.1.4 | Ver Certificado |  | 3d | 2021-04-30 A | 2021-05-04 A | 5 | 100% |
| 7 | 1.1.5 | Perfil |  | 1d | 2021-05-05 A | 2021-05-05 A | 6 | 100% |
| 8 | 1.2 | **Panel de Administrador** |  | 14d | 2021-05-06 A | 2021-05-25 A |  | 100% |
| 9 | 1.2.1 | Acceso de Administrador |  | 1d | 2021-05-06 A | 2021-05-06 A | 7 | 100% |
| 10 | 1.2.2 | Home |  | 1d | 2021-05-07 A | 2021-05-07 A | 9 | 100% |
| 11 | 1.2.3 | Mantenimiento de Cursos |  | 2d | 2021-05-10 A | 2021-05-11 A | 10 | 100% |
| 12 | 1.2.4 | Mantenimiento de Categorias |  | 2d | 2021-05-12 A | 2021-05-13 A | 11 | 100% |
| 13 | 1.2.5 | Mantenimiento de Instructores |  | 2d | 2021-05-14 A | 2021-05-17 A | 12 | 100% |
| 14 | 1.2.6 | Mantenimiento de Usuarios |  | 2d | 2021-05-18 A | 2021-05-19 A | 13 | 100% |
| 15 | 1.2.7 | Detalle de Certificados |  | 3d | 2021-05-20 A | 2021-05-24 A | 14 | 100% |
| 16 | 1.2.8 | Perfil |  | 1d | 2021-05-25 A | 2021-05-25 A | 15 | 100% |
| 17 | 1.3 | **Pruebas** |  | 7d | 2021-05-26 A | 2021-06-03 A |  | 100% |
| 18 | 1.3.1 | Pruebas Con el Cliente |  | 5d | 2021-05-26 A | 2021-06-01 A | 16 | 100% |
| 19 | 1.3.2 | Correcion y Observaciones |  | 2d | 2021-06-02 A | 2021-06-03 A | 18 | 100% |
| 20 | 1.4 | Diplomas y Certificados v2 | inactive, manual | 1d? | 2021-04-26 | 2021-04-26 |  |  |
